task_id,stage_id,stage_name,task_name,core_deliverable,engineering_track,start_week,end_week,duration_weeks,duration_days,start_date,end_date,dependencies,critical_path,owner,capex_mvnd,citations,estimation_rationale
V1.1,V1,"1. Design, Acoustic Spec & Permits","Site Handover, Topographic Survey & 14-Court Master Layout",14-Court + Cafe + Coaching CAD Blueprints,Architecture & Civil,W1.0,W1.5,1.5,10,2027-10-04,2027-10-13,Q4 2027 Kickoff,Yes,Lead Architect + Civil Eng,185.0,"ASBA2024, PickleTile2025","ASBA court construction guidelines allocate 1.5 weeks upon lease handover for laser topographic survey, soil bearing tests, and finalizing 14-court (30x60 ft per court) + coaching + cafe blueprints."
V1.2,V1,"1. Design, Acoustic Spec & Permits",Acoustic Noise-Abatement Engineering & MEP/Lighting Blueprints,Post-21:00 Decibel Model (<55 dBA) & 3-Phase MEP,Acoustic & MEP Eng,W1.5,W2.0,1.5,10,2027-10-08,2027-10-17,V1.1,Parallel Track,Acoustic + MEP Engineers,140.0,"QCVN26BTNMT, ASBA2024","To prevent post-21:00 neighbor noise complaints (Case Page 2 & 4), modeling perimeter STC-32 acoustic curtains and directional LED optics alongside 3-phase MEP schematics takes 1.5 weeks."
V1.3,V1,"1. Design, Acoustic Spec & Permits","HCMC Construction Permit, Environmental & PCCC Fire Design Approval",Approved Construction & PCCC Fire Dossier,Regulatory & Permits,W2.0,W3.0,2.0,14,2027-10-11,2027-10-24,"V1.1, V1.2",Yes,Project Director + Legal,130.0,"VietnamPCCC2024, HCMCFitOut2025","In Ho Chi Minh City, interior/canopy fit-out notifications and Police Fire Prevention (PCCC Decree 50/2024/ND-CP) design tham duyet for commercial sports venues require 2.0 weeks."
V2.1,V2,2. Concrete Pour & 28-Day Curing,"Site Clearing, Sub-Base Compaction & Stormwater Drainage Grid",95% Proctor Compacted Base & Perimeter Drains,Civil Earthworks,W3.5,W4.5,2.0,14,2027-10-22,2027-11-04,V1.3,Yes,Civil Contractor,680.0,"PickleTile2025, EnduranceCourts2025","Excavating, installing HCMC monsoon French drains, and compacting crushed stone sub-base across ~3,200 m2 (14 courts + walkways) takes 2.0 weeks per commercial court builders."
V2.2,V2,2. Concrete Pour & 28-Day Curing,Laser-Graded Vapor Barrier & Post-Tensioned Concrete Slab Pour (14 Courts),14 Monolithic Court Slabs (0.83% Slope),Structural Concrete,W5.0,W6.0,2.0,14,2027-11-01,2027-11-14,V2.1,Yes,Structural Concrete Crew,1340.0,"ASBA2024, LoneStarSurface2025",Laying 15-mil polyolefin vapor barriers (essential in humid HCMC) and pouring laser-screeded 120mm post-tensioned concrete slabs across 14 courts in sequential bays takes 2.0 weeks.
V2.3,V2,2. Concrete Pour & 28-Day Curing,Mandatory 28-Day Concrete Drying & Curing Period,Slab Moisture Cure Before Acrylic Coating,Slab Curing Window,W5.5,W8.5,4.0,28,2027-11-05,2027-12-02,V2.2,Yes,Civil QA + Surface Spec,150.0,"ASBA2024, PickleTile2025, ProTrackTennis2025",Every acrylic manufacturer (Laykold/SportMaster/ASBA) mandates a strict 28-day (4.0-week) concrete hydration and moisture-vapor curing period before applying non-breathable acrylic coatings.
V3.1,V3,"3. Roof, MEP, LED, Cafe & Coaching",High-Clearance Insulated Roof Canopy & Louvered Monsoon Windscreens,9m-Clearance Heat-Insulated Canopy Roof,Steel & Canopy,W4.5,W8.0,4.5,32,2027-10-28,2027-11-28,V1.3,Parallel Track,Steel Canopy Contractor,980.0,"HCMCFitOut2025, EnduranceCourts2025","Erecting perimeter steel trusses, PU-insulated roofing (reducing HCMC afternoon court heat by 6-8 C), and monsoon rain louvers runs in parallel with slab pouring/curing across 4.5 weeks."
V3.2,V3,"3. Roof, MEP, LED, Cafe & Coaching","3-Phase Electrical Grid, HVAC Ventilation & 500-Lux Glare-Free LED Lighting",56 Asymmetric Court LEDs & 3-Phase Switchgear,MEP & Sports Lighting,W6.5,W9.5,4.0,28,2027-11-11,2027-12-08,V3.1,Parallel Track,MEP & Lighting Contractor,640.0,"ASBA2024, PickleTile2025","Pulling armored 3-phase cables, high-volume low-speed (HVLS) circulation fans, and mounting 500-lux asymmetric anti-glare LED fixtures across 14 courts takes 4.0 weeks."
V3.3,V3,"3. Roof, MEP, LED, Cafe & Coaching","Specialty Cafe, Coaching Video-Analysis Studio & Locker/Shower Fit-Out","Turnkey Cafe Bar, Coaching Room & Lockers",Interior & Hospitality,W7.5,W11.5,5.0,35,2027-11-19,2027-12-22,V3.1,Parallel Track,Interior Fit-Out Squad,690.0,"HCMCFitOut2025, GanasGym2025","Per Case Page 3 ('14 courts, coaching facilities and a cafe'), building out the commercial espresso/electrolyte bar, coaching video analysis room, and tiled locker showers takes 5.0 weeks."
V4.1,V4,4. Acrylic Surfacing & Acoustic Baffles,"Slab Moisture Calcium-Chloride Testing, Diamond Grinding & Patch Leveling",Zero-Birdbath Certified Slab Profile,Surface Preparation,W9.5,W10.0,1.5,10,2027-12-03,2027-12-12,V2.3,Yes,Certified Court Surfacers,280.0,"ASBA2024, ProTrackTennis2025","Once the 28-day slab cure finishes at W8.5, ASTM F1869 moisture testing, diamond grinding, flood testing for 'birdbaths' (>1/8 inch ponding), and acrylic patch leveling take 1.5 weeks."
V4.2,V4,4. Acrylic Surfacing & Acoustic Baffles,Multi-Layer Cushioned Silica-Sand Acrylic Surfacing & Precision Line Striping,14 ITF/USAPA Tournament-Grade Acrylic Courts,Acrylic Court Surfacing,W11.0,W13.0,3.0,21,2027-12-13,2028-01-02,V4.1,Yes,Certified Court Surfacers,785.0,"PickleTile2025, LoneStarSurface2025",Applying 1 adhesion primer + 2 rubberized cushion coats + 2 silica-sand texture color coats + laser-taped kitchen/baseline striping across 14 courts (with 24h dry times between coats) takes 3.0 weeks.
V4.3,V4,4. Acrylic Surfacing & Acoustic Baffles,"Perimeter Acoustic Noise Curtains, Court Divider Fencing & Net Systems","STC-32 Sound Barriers, Fencing & 14 Pro Nets",Acoustics & Hardware,W12.5,W14.0,2.5,18,2027-12-23,2028-01-09,"V3.2, V4.1",Yes,Acoustic & Court Installers,440.0,"QCVN26BTNMT, EnduranceCourts2025","Installing heavy-duty STC-32 mass-loaded vinyl acoustic perimeter baffles (-12 dB noise reduction for post-21:00 play), 10-ft court divider fencing, and 14 internal-wind net posts takes 2.5 weeks."
V5.1,V5,"5. PCCC Audit, POS & Grand Opening",PCCC Fire Safety Final Inspection & Operating License Issuance,Official HCMC PCCC & Sports Venue Operating Permit,Regulatory Sign-Off,W14.0,W14.5,1.5,10,2028-01-03,2028-01-13,"V3.3, V4.2",Yes,Project Director + PCCC,145.0,"VietnamPCCC2024, HCMCFitOut2025",On-site Police PCCC pressure/smoke alarm acceptance testing (nghiem thu PCCC) and ward operating registration require 1.5 weeks prior to public opening.
V5.2,V5,"5. PCCC Audit, POS & Grand Opening","PICK! Social Platform, QR Turnstiles, Cafe POS & Automated Lighting Integration",20-Court Unified App Grid & Smart Lighting Relay,Tech & POS Integration,W14.5,W15.0,1.5,10,2028-01-06,2028-01-16,"V3.3, V4.3",Parallel Track,Tech Lead + Ops Manager,215.0,"InternalPickSocial, NextLevelSports2025","Because the PICK! Social & AdaptivePricing platform is already live since May 2027, onboarding Courts 7-20 into the Redis/Postgres grid and wiring QR check-in scanners + cafe POS takes 1.5 weeks."
V5.3,V5,"5. PCCC Audit, POS & Grand Opening","Venue 2 Staff & Coach Recruitment, Training & 20-Court Grand Opening Tournament",Trained 14-Court Crew & VIP Launch Event (End Jan-28),Ops Readiness & Launch,W15.5,W16.0,1.5,10,2028-01-14,2028-01-23,"V5.1, V5.2",Yes,Club Manager + Head Coach,200.0,"HCMCFitOut2025, CasePage3PathA","Training front-desk, cleaning, cafe baristas, and certified coaches (including U-18 safeguarding) plus hosting a 300-player HCMC inter-university launch tournament completes Week 16 (end of Jan 2028)."
V6.1,V6,6. 6-9 Month Fill-Up Ramp (20 Courts),Phase 1 Fill-Up (Months 14-16: Feb 2028 - Apr 2028): Member Migration & Off-Peak Ramp,Ramp 14 New Courts from ~28% to ~60% of Steady-State,Fill-Up & Growth,W17.0,W28.0,12.0,84,2028-01-24,2028-04-16,V5.3,Yes,Growth + Community Ops,0.0,"CasePage3PathA, InternalAdaptivePricing","During the first 3 months post-opening (Feb-28 to Apr-28), existing PICK! Social members, peak waitlist overflow from Venue 1, and AdaptivePricing daytime discounts drive utilization to ~60% of steady-state."
V6.2,V6,6. 6-9 Month Fill-Up Ramp (20 Courts),Phase 2 Fill-Up (Months 17-21: May 2028 - Sep 2028): Full 20-Court Steady-State Maturity,Reach 100% Steady-State 20-Court Capacity (6-9 Mo Target),Fill-Up & Maturity,W29.0,W48.0,20.0,140,2028-04-17,2028-09-03,V6.1,Yes,Club Ops + League Directors,0.0,CasePage3PathA,"Per Case Page 3 ('New clubs usually take six to nine months to fill up'), Months 4-8 of operation (May-Sep 2028) complete the smooth S-curve ramp to 100% steady-state 20-court utilization."
